Task ID,Section,Description,Owner,Dependencies,Pre-requisites,Definition of Done,Status,KPIs,Target Sprint,Artifacts To Track,Validation Method,Estimate (O/M/P),Planned Start,Planned Finish,Percent Complete,Dependency Types,Cadence
IFC-313,AI/Intelligence,"Real inbox integration - contact.draftReply real-thread resolver. IFC-312 audit fix F5 follow-up: the draftReply procedure currently requires the client to supply a full emailThread array (server returns PRECONDITION_FAILED otherwise). IFC-313 replaces this with a server-side resolver that takes input.emailThreadId and fetches the actual ContactEmailThread history (pending real inbox ingestion infra - to be scoped separately). Keep the client-supplied emailThread path as a fallback for power users / integrations.",AI Eng (STOA-Intelligence),"IFC-312",FILE:packages/db/prisma/schema.prisma;FILE:apps/api/src/modules/contact/contact.router.ts;FILE:apps/ai-worker/src/contact-reply-draft.chain.ts;FILE:apps/ai-worker/src/jobs/reply-draft.job.ts,"contact.draftReply resolves emailThreadId to real thread messages when supplied; client-supplied emailThread remains as fallback; zero placeholder drafts persisted in production; regression on IFC-312 assertions; scoped coverage >=90%",Backlog,"Draft generation uses real thread context when emailThreadId resolvable; Coverage >=90%",19,ARTIFACT:apps/api/src/modules/contact/contact.router.ts;ARTIFACT:apps/ai-worker/src/contact-reply-draft.chain.ts,VALIDATE:pnpm typecheck;VALIDATE:pnpm test --run;VALIDATE:pnpm lint;VALIDATE:pnpm build;GATE:coverage-gte-90,180/360/540,,,0,"IFC-312:FS",
